# New book launch

Schedule from MS Project, 2018-01-08 to 2018-03-06, costs in $.
New book launch schedule
Lucerne Publishing
New children's book for spring release

## Calendars

- Standard: Mon-Fri 08:00-12:00, 13:00-17:00; Sat-Sun off. Exceptions (off unless hours are given): 2018-01-25 (Staff at morale event).

## Resources

| Resource | Rate | Notes |
| --- | --- | --- |
| Jun Cao | 42 |  |
| Sharon Salavaria | 27.5 | Sharons standard pay rate is adjusted for her half-time work schedule. |
| Toby Nixon | 67.5 | Toby worked on launch campaigns for Toni Poes previous two books. |
| Toni Poe |  |  |
| Zac Woodall | 55 |  |
| Copyeditors | 45 |  |
| Travel |  |  |
| Carole Poland | 52.5 |  |
| Dan Jump | 75.5 |  |
| Hany Morcos | 38.75 |  |
| Jane Dow | 55 |  |
| John Evans | 69.5 |  |
| Katie Jordan | 48 |  |
| Luis Sousa | 70 |  |
| Printing Service |  |  |
| Robin Wood | 44 |  |
| Vikas Jain | 22 |  |
| William Flash |  |  |

## Schedule

| ID | WBS | Task | Type | Duration | Start | Finish | Predecessors | Total slack | Free slack | Resources | Work | Cost |
| --- | --- | --- | --- | --- | --- | --- | --- | --- | --- | --- | --- | --- |
| 1 | 1 | **Planning Phase** |  | 11d | 2018-01-08 | 2018-01-22 |  | 0d |  |  | 168h | 7,500 |
| 2 | 1.1 | Assign launch team members |  | 1d | 2018-01-08 | 2018-01-08 |  | 0d |  | Carole Poland | 8h | 420 |
| 3 | 1.2 | Complete author questionnaire |  | 1w | 2018-01-09 | 2018-01-15 | 2 | 5d |  | Toni Poe | 40h |  |
| 4 | 1.3 | Schedule author interviews |  | 1w | 2018-01-08 | 2018-01-15 | 2 | 5d |  | Jun Cao | 40h | 1,680 |
| 5 | 1.4 | Design and order marketing material |  | 2w | 2018-01-09 | 2018-01-22 | 2 | 0d |  | Toby Nixon | 80h | 5,400 |
| 6 | 1.5 | Planning complete! | milestone | 0d | 2018-01-22 | 2018-01-22 | 5 | 0d |  |  |  |  |
| 7 | 2 | **Internal Launch Phase** |  | 18d | 2018-01-23 | 2018-02-16 | 1 | 0d |  |  | 140h | 7,690 |
| 8 | 2.1 | Kickoff book launch meeting |  | 1d | 2018-01-23 | 2018-01-23 |  | 0d |  | Sharon Salavaria [50%]; Toby Nixon | 12h | 650 |
| 9 | 2.2 | Plan author's travel itinerary |  | 3d | 2018-01-24 | 2018-01-29 | 8 | 14d |  | Jane Dow; Zac Woodall | 48h | 2,640 |
| 10 | 2.3 | Channel Sales prep |  | 2w | 2018-01-24 | 2018-02-07 | 8 | 0d |  | Zac Woodall | 80h | 4,400 |
| 11 | 2.4 | Complete book launch form |  | 2d | 2018-02-08 | 2018-02-09 | 10 | 5d |  |  |  |  |
| 12 | 2.5 | Prepare book sales kit |  | 1w | 2018-02-08 | 2018-02-14 | 8, 10 | 0d |  |  |  |  |
| 13 | 2.6 | Distribute internal marketing material |  | 2d | 2018-02-15 | 2018-02-16 | 12 | 0d |  |  |  |  |
| 14 | 3 | **Public Launch Phase** |  | 12d | 2018-02-19 | 2018-03-06 | 7 | 0d |  |  |  |  |
| 15 | 3.1 | **Author travel and appearances** |  | 2d | 2018-02-19 | 2018-02-20 |  | 10d |  |  |  |  |
| 16 | 3.1.1 | Author radio interview |  | 1d | 2018-02-19 | 2018-02-19 |  | 10d | 0d |  |  |  |
| 17 | 3.1.2 | Author reading and signing at book fair |  | 1d | 2018-02-20 | 2018-02-20 | 16 | 10d |  |  |  |  |
| 18 | 3.2 | Distribute advance copies |  | 2d | 2018-02-19 | 2018-02-20 |  | 10d |  |  |  |  |
| 19 | 3.3 | Distribute book sales kit |  | 2d | 2018-02-19 | 2018-02-20 |  | 0d |  |  |  |  |
| 20 | 3.4 | Coordinate magazine feature articles |  | 7d | 2018-02-21 | 2018-03-01 | 19 | 3d |  |  |  |  |
| 21 | 3.5 | Launch public web portal for book |  | 1w | 2018-02-21 | 2018-02-27 | 19 | 0d |  |  |  |  |
| 22 | 3.6 | Launch social media programs for book |  | 1w | 2018-02-28 | 2018-03-06 | 21 | 0d |  |  |  |  |
| 23 | 3.7 | Launch complete! | milestone | 0d | 2018-03-06 | 2018-03-06 | 20, 21, 22 | 0d |  |  |  |  |

Notes:
- 18: Get recipient list from publicist
