# Children's book schedule

Schedule from MS Project, 2018-04-09 to 2018-11-16, costs in $.
Lucerne Publishing

## Calendars

- Standard: Mon-Fri 08:00-12:00, 13:00-17:00; Sat-Sun off.
- Mon-Wed Task Calendar: Mon-Wed 08:00-12:00, 13:00-17:00; Thu-Sun off.

## Resources

| Resource | Rate | Notes |
| --- | --- | --- |
| Carole Poland | 52.5 |  |
| Color Setting Services |  |  |
| Copyeditors | 45 |  |
| Dan Jump | 75.5 |  |
| Hany Morcos | 38.75 |  |
| Jane Dow | 55 |  |
| John Evans | 69.5 |  |
| Jun Cao | 42 |  |
| Katie Jordan | 48 |  |
| Luis Sousa | 70 |  |
| Printing Service |  |  |
| Robin Wood | 44 |  |
| Sharon Salavaria | 27.5 | Sharon's standard pay rate is adjusted for her half-time work schedule. |
| Tad Orman |  |  |
| Toby Nixon | 67.5 | Toby worked on launch campaigns for Toni Poe's previous two books. |
| Travel |  |  |
| Vikas Jain | 22 |  |
| William Flash |  |  |
| Zac Woodall | 55 |  |

## Schedule

| ID | WBS | Task | Type | Duration | Start | Finish | Predecessors | Total slack | Constraint | Resources | Work | Cost |
| --- | --- | --- | --- | --- | --- | --- | --- | --- | --- | --- | --- | --- |
| 1 | 1 | **Acquisition** |  | 28d | 2018-04-09 | 2018-05-16 |  | 0d |  |  | 220h | 7,200 |
| 2 | 1.1 | Manuscript received | milestone | 0d | 2018-04-09 | 2018-04-09 |  | 0d |  |  |  |  |
| 3 | 1.2 | Content edit |  | 15d | 2018-04-09 | 2018-05-02 | 2 | 0d |  | Carole Poland | 120h | 6,300 |
| 4 | 1.3 | Author review of content edit |  | 10d | 2018-05-03 | 2018-05-16 | 3 | 0d |  | Tad Orman; Copyeditors [25%] | 100h | 900 |
| 5 | 1.4 | Handoff to Editorial | milestone | 0d | 2018-05-16 | 2018-05-16 | 4 | 0d |  | Carole Poland |  |  |
| 6 | 2 | **Editorial** |  | 37.5d | 2018-05-17 | 2018-07-09 | 1 | 0d |  |  | 420h | 14,800 |
| 7 | 2.1 | Organize manuscript for copyedit |  | 5d | 2018-05-17 | 2018-05-23 |  | 0d |  | Hany Morcos | 40h | 1,550 |
| 8 | 2.2 | Copyedit |  | 20d | 2018-05-24 | 2018-06-20 | 7 | 0d |  | Copyeditors [150%] | 240h | 10,800 |
| 9 | 2.3 | Author review of copyedit |  | 10d | 2018-06-21 | 2018-07-04 | 8 | 0d |  | Tad Orman; Copyeditors [25%] | 100h | 900 |
| 10 | 2.4 | Copyedit incorp |  | 5d | 2018-07-02 | 2018-07-09 | 9FS-2.5% | 0d |  | Hany Morcos | 40h | 1,550 |
| 11 | 2.5 | Handoff to Production | milestone | 0d | 2018-07-09 | 2018-07-09 | 10 | 0d |  | Hany Morcos |  |  |
| 12 | 3 | **Design and Production** |  | 50d | 2018-07-09 | 2018-09-17 | 6 | 0d |  |  | 676h | 32,650 |
| 13 | 3.1 | Set pages |  | 15d | 2018-07-09 | 2018-07-30 |  | 0d |  | Jane Dow | 120h | 6,600 |
| 14 | 3.2 | Interior illustration design |  | 15d | 2018-07-09 | 2018-07-30 | 13SS | 0d |  | Luis Sousa | 120h | 8,400 |
| 15 | 3.3 | **1st Pages review** |  | 25d | 2018-07-30 | 2018-09-03 | 14 | 0d |  |  | 220h | 7,450 |
| 16 | 3.3.1 | Proofread and index |  | 10d | 2018-07-30 | 2018-08-13 |  | 0d | start no earlier than 2018-07-20 | Tad Orman; Copyeditors | 100h | 900 |
| 17 | 3.3.2 | Incorporate 1st Pages review |  | 5d | 2018-08-13 | 2018-08-20 | 16 | 0d |  | Hany Morcos | 40h | 1,550 |
| 18 | 3.3.3 | Send proofed pages to Production | milestone | 0d | 2018-08-20 | 2018-08-20 | 17 | 0d |  | Hany Morcos |  |  |
| 19 | 3.3.4 | Enter page corrections and index |  | 5d | 2018-08-20 | 2018-08-27 | 18 | 0d |  | Jane Dow | 40h | 2,200 |
| 20 | 3.3.5 | Cover design |  | 5d | 2018-08-27 | 2018-09-03 | 19 | 0d |  | Luis Sousa | 40h | 2,800 |
| 21 | 3.4 | **2nd Pages review** |  | 10d | 2018-09-03 | 2018-09-17 |  | 0d |  |  | 160h | 7,400 |
| 22 | 3.4.1 | Proof and review |  | 5d | 2018-09-03 | 2018-09-10 | 20 | 0d |  | Hany Morcos | 40h | 1,550 |
| 23 | 3.4.2 | Send proofed pages to Production | milestone | 0d | 2018-09-10 | 2018-09-10 | 22 | 0d |  | Hany Morcos |  |  |
| 24 | 3.4.3 | Final review |  | 5d | 2018-09-10 | 2018-09-17 | 23 | 0d |  | Jane Dow; Hany Morcos; Carole Poland | 120h | 5,850 |

| ID | WBS | Task | Duration | Start | Finish | Predecessors | Total slack | Free slack | Calendar | Resources | Work | Cost |
| --- | --- | --- | --- | --- | --- | --- | --- | --- | --- | --- | --- | --- |
| 25 | 3.5 | **Design book's companion website** | 5d | 2018-09-03 | 2018-09-10 |  | 5d |  |  |  | 56h | 2,800 |
| 26 | 3.5.1 | Create mockup | 3d | 2018-09-03 | 2018-09-06 | 20 | 5d | 0d |  | Luis Sousa | 24h | 1,680 |
| 27 | 3.5.2 | Review with author | 2d | 2018-09-06 | 2018-09-10 | 26 | 5d |  |  | Luis Sousa; Tad Orman | 32h | 1,120 |
| 28 | 4 | **Color prep and printing** | 44d | 2018-09-17 | 2018-11-16 |  | 0d |  |  |  | 328h | 310 |
| 29 | 4.1 | Send to color house | 1d | 2018-09-17 | 2018-09-18 | 24, 27 | 0d |  | Mon-Wed Task Calendar | Hany Morcos | 8h | 310 |
| 30 | 4.2 | Generate proofs | 10d | 2018-09-18 | 2018-10-02 | 29 | 0d |  |  | Color Setting Services | 80h |  |
| 31 | 4.3 | Print and ship | 30d | 2018-10-05 | 2018-11-16 | 30FS+3d | 0d |  |  | Printing Service | 240h |  |
