# Children's Book Schedule

Schedule from MS Project, 2018-04-09 to 2018-11-15, costs in $.
Lucerne Publishing

## Calendars

- Standard: Mon-Fri 08:00-12:00, 13:00-17:00; Sat-Sun off.
- Mon-Wed Task Calendar: Mon-Wed 08:00-12:00, 13:00-17:00; Thu-Sun off.

## Resources

| Resource | Group | Unit | Rate |
| --- | --- | --- | --- |
| Carole Poland | Editorial |  | 52.5 |
| Copyeditors | Editorial |  | 45 |
| Dan Jump | Design |  | 75.5 |
| Hany Morcos | Editorial |  | 38.75 |
| Jane Dow | Editorial |  | 55 |
| Jun Cao | Editorial |  | 42 |
| Luis Sousa | Design |  | 70 |
| Printing Service | Production |  |  |
| Travel | Other |  |  |
| Tad Orman | Other |  |  |
| Color Setting Services | Production |  |  |
| Advance proofs | Production | copies | 15 |

## Schedule

| ID | WBS | Task | Type | Duration | Start | Finish | Predecessors | Total slack | Constraint | Deadline | Resources | Work | Cost | Editorial Focus |
| --- | --- | --- | --- | --- | --- | --- | --- | --- | --- | --- | --- | --- | --- | --- |
| 1 | 1 | **Editorial staff meeting** |  | 60.12d | 2018-04-16 08:00 | 2018-07-09 09:00 |  | 93.5d |  |  |  | 45.5h | 2,223 |  |
| 2 | 1.1 | Editorial staff meeting 1 |  | 1h | 2018-04-16 08:00 | 2018-04-16 09:00 |  | 153.5d | start no earlier than 2018-04-16 08:00 |  | Carole Poland; Jun Cao; Hany Morcos; Dan Jump [50%] | 3.5h | 171 |  |
| 3 | 1.2 | Editorial staff meeting 2 |  | 1h | 2018-04-23 08:00 | 2018-04-23 09:00 |  | 148.5d | start no earlier than 2018-04-23 08:00 |  | Carole Poland; Jun Cao; Hany Morcos; Dan Jump [50%] | 3.5h | 171 |  |
| 4 | 1.3 | Editorial staff meeting 3 |  | 1h | 2018-04-30 08:00 | 2018-04-30 09:00 |  | 143.5d | start no earlier than 2018-04-30 08:00 |  | Carole Poland; Jun Cao; Hany Morcos; Dan Jump [50%] | 3.5h | 171 |  |
| 5 | 1.4 | Editorial staff meeting 4 |  | 1h | 2018-05-07 08:00 | 2018-05-07 09:00 |  | 138.5d | start no earlier than 2018-05-07 08:00 |  | Carole Poland; Jun Cao; Hany Morcos; Dan Jump [50%] | 3.5h | 171 |  |
| 6 | 1.5 | Editorial staff meeting 5 |  | 1h | 2018-05-14 08:00 | 2018-05-14 09:00 |  | 133.5d | start no earlier than 2018-05-14 08:00 |  | Carole Poland; Jun Cao; Hany Morcos; Dan Jump [50%] | 3.5h | 171 |  |
| 7 | 1.6 | Editorial staff meeting 6 |  | 1h | 2018-05-21 08:00 | 2018-05-21 09:00 |  | 128.5d | start no earlier than 2018-05-21 08:00 |  | Carole Poland; Jun Cao; Hany Morcos; Dan Jump [50%] | 3.5h | 171 |  |
| 8 | 1.7 | Editorial staff meeting 7 |  | 1h | 2018-05-28 08:00 | 2018-05-28 09:00 |  | 123.5d | start no earlier than 2018-05-28 08:00 |  | Carole Poland; Jun Cao; Hany Morcos; Dan Jump [50%] | 3.5h | 171 |  |
| 9 | 1.8 | Editorial staff meeting 8 |  | 1h | 2018-06-04 08:00 | 2018-06-04 09:00 |  | 118.5d | start no earlier than 2018-06-04 08:00 |  | Carole Poland; Jun Cao; Hany Morcos; Dan Jump [50%] | 3.5h | 171 |  |
| 10 | 1.9 | Editorial staff meeting 9 |  | 1h | 2018-06-11 08:00 | 2018-06-11 09:00 |  | 113.5d | start no earlier than 2018-06-11 08:00 |  | Carole Poland; Jun Cao; Hany Morcos; Dan Jump [50%] | 3.5h | 171 |  |
| 11 | 1.10 | Editorial staff meeting 10 |  | 1h | 2018-06-18 08:00 | 2018-06-18 09:00 |  | 108.5d | start no earlier than 2018-06-18 08:00 |  | Carole Poland; Jun Cao; Hany Morcos; Dan Jump [50%] | 3.5h | 171 |  |
| 12 | 1.11 | Editorial staff meeting 11 |  | 1h | 2018-06-25 08:00 | 2018-06-25 09:00 |  | 103.5d | start no earlier than 2018-06-25 08:00 |  | Carole Poland; Jun Cao; Hany Morcos; Dan Jump [50%] | 3.5h | 171 |  |
| 13 | 1.12 | Editorial staff meeting 12 |  | 1h | 2018-07-02 08:00 | 2018-07-02 09:00 |  | 98.5d | start no earlier than 2018-07-02 08:00 |  | Carole Poland; Jun Cao; Hany Morcos; Dan Jump [50%] | 3.5h | 171 |  |
| 14 | 1.13 | Editorial staff meeting 13 |  | 1h | 2018-07-09 08:00 | 2018-07-09 09:00 |  | 93.5d | start no earlier than 2018-07-09 08:00 |  | Carole Poland; Jun Cao; Hany Morcos; Dan Jump [50%] | 3.5h | 171 |  |
| 15 | 2 | **Acquisition** |  | 30.25d | 2018-04-09 08:00 | 2018-05-21 10:00 |  | 0d |  |  |  | 280h | 9,900 |  |
| 16 | 2.1 | Manuscript received | milestone | 0d | 2018-04-09 08:00 | 2018-04-09 08:00 |  | 0d |  |  |  |  |  |  |
| 17 | 2.2 | Content edit |  | 15d | 2018-04-09 08:00 | 2018-05-03 10:00 | 16 | 0d |  |  | Carole Poland | 120h | 6,300 | Full developmental edit |
| 18 | 2.3 | Author review of content edit |  | 12d | 2018-05-03 10:00 | 2018-05-21 10:00 | 17 | 0d |  |  | Tad Orman; Copyeditors | 160h | 3,600 | Incorp must-fix issues |
| 19 | 2.4 | Handoff to Editorial | milestone | 0d | 2018-05-21 10:00 | 2018-05-21 10:00 | 18 | 0d |  | 2018-06-01 17:00 | Carole Poland |  |  |  |
| 20 | 3 | **Editorial** |  | 29.12d | 2018-05-21 10:00 | 2018-06-29 11:00 | 15 | 0d |  |  |  | 400h | 15,670 |  |
| 21 | 3.1 | Organize manuscript for copyedit |  | 5.12d | 2018-05-21 10:00 | 2018-05-28 11:00 |  | 0d |  |  | Hany Morcos; Dan Jump [50%] | 60h | 3,060 | Address outstanding line edit issues |
| 22 | 3.2 | Copyedit |  | 11.25d | 2018-05-28 11:00 | 2018-06-12 14:00 | 21 | 0d |  |  | Copyeditors [200%] | 180h | 8,100 | Style Guide compliance |
| 23 | 3.3 | Author review of copyedit |  | 10d | 2018-06-12 14:00 | 2018-06-26 14:00 | 22 | 0d |  |  | Tad Orman; Copyeditors [25%] | 100h | 900 | Incorp must-fix issues |
| 24 | 3.4 | Copyedit incorp |  | 5.12d | 2018-06-22 09:00 | 2018-06-29 11:00 | 23FS-2.5% | 0d |  |  | Carole Poland; Dan Jump [50%] | 60h | 3,610 | Incorp must-fix issues |
| 25 | 3.5 | Handoff to Production | milestone | 0d | 2018-06-29 11:00 | 2018-06-29 11:00 | 24 | 0d |  |  | Hany Morcos |  |  |  |

| ID | WBS | Task | Type | Duration | Start | Finish | Predecessors | Total slack | Free slack | Constraint | Calendar | Resources | Work | Cost |
| --- | --- | --- | --- | --- | --- | --- | --- | --- | --- | --- | --- | --- | --- | --- |
| 26 | 4 | **Design and Production** |  | 53.25d | 2018-06-29 11:00 | 2018-09-12 14:00 | 20 | 0d |  |  |  |  | 828h | 43,577.75 |
| 27 | 4.1 | Set pages |  | 15d | 2018-06-29 11:00 | 2018-07-20 11:00 |  | 0d |  |  |  | Jane Dow | 120h | 7,548.75 |
| 28 | 4.2 | Interior illustration design |  | 15.25d | 2018-06-29 11:00 | 2018-07-20 14:00 | 27SS | 0d |  |  |  | Luis Sousa; Hany Morcos | 240h | 13,050 |
| 29 | 4.3 | **1st Pages review** |  | 25d | 2018-07-20 14:00 | 2018-08-24 14:00 | 28 | 0d |  |  |  |  | 260h | 10,800 |
| 30 | 4.3.1 | Proofread and index |  | 10d | 2018-07-20 14:00 | 2018-08-03 14:00 |  | 0d |  | start no earlier than 2018-07-20 08:00 |  | Tad Orman; Copyeditors | 100h | 900 |
| 31 | 4.3.2 | Incorporate 1st Pages review |  | 5d | 2018-08-03 14:00 | 2018-08-10 14:00 | 30 | 0d |  |  |  | Hany Morcos; Dan Jump [50%] | 60h | 3,060 |
| 32 | 4.3.3 | Send proofed pages to Production | milestone | 0d | 2018-08-10 14:00 | 2018-08-10 14:00 | 31 | 0d |  |  |  | Hany Morcos |  |  |
| 33 | 4.3.4 | Enter page corrections and index |  | 5d | 2018-08-10 14:00 | 2018-08-17 14:00 | 32 | 0d |  |  |  | Jane Dow; Dan Jump [50%] | 60h | 4,040 |
| 34 | 4.3.5 | Cover design |  | 5d | 2018-08-17 14:00 | 2018-08-24 14:00 | 33 | 0d |  |  |  | Luis Sousa | 40h | 2,800 |
| 35 | 4.4 | **2nd Pages review** |  | 13d | 2018-08-24 14:00 | 2018-09-12 14:00 |  | 0d |  |  |  |  | 120h | 6,345 |
| 36 | 4.4.1 | Proof and review |  | 6.5d | 2018-08-24 14:00 | 2018-09-04 09:00 | 34 | 0d |  |  |  | Hany Morcos | 40h | 1,800 |
| 37 | 4.4.2 | Send proofed pages to Production | milestone | 0d | 2018-09-04 09:00 | 2018-09-04 09:00 | 36 | 0d |  |  |  | Hany Morcos |  |  |
| 38 | 4.4.3 | Final review |  | 5d | 2018-09-05 14:00 | 2018-09-12 14:00 | 37 | 0d |  |  |  | Jane Dow; Hany Morcos [50%]; Carole Poland [50%]; Advance proofs [20 copies] | 80h | 4,545 |
| 39 | 4.5 | **Design book's companion website** |  | 10d | 2018-08-24 14:00 | 2018-09-07 14:00 | 29 | 3d | 0d |  |  |  | 88h | 5,834 |
| 40 | 4.5.1 | Create mockup |  | 4.5d | 2018-08-24 14:00 | 2018-09-05 14:00 |  | 3d | 0d |  |  | Luis Sousa; Hany Morcos | 48h | 2,610 |
| 41 | 4.5.2 | Review with author |  | 2d | 2018-09-05 14:00 | 2018-09-07 14:00 | 40 | 3d |  |  |  | Luis Sousa; Tad Orman; Travel [0.1%]; Dan Jump [50%] | 40h | 3,224 |
| 42 | 5 | **Color prep and printing** |  | 46d | 2018-09-12 14:00 | 2018-11-15 14:00 | 39 | 0d |  |  |  |  | 328h | 5,310 |
| 43 | 5.1 | Send to color house |  | 1d | 2018-09-12 14:00 | 2018-09-17 14:00 | 35 | 0d |  |  | Mon-Wed Task Calendar | Hany Morcos | 8h | 310 |
| 44 | 5.2 | Generate proofs |  | 10d | 2018-09-17 14:00 | 2018-10-01 14:00 | 43 | 0d |  |  |  | Color Setting Services | 80h | 5,000 |
| 45 | 5.3 | Print and ship |  | 30d | 2018-10-04 14:00 | 2018-11-15 14:00 | 44FS+3d | 0d |  |  |  | Printing Service | 240h |  |
| 46 | 6 | **Book launch prep** |  | 20d | 2018-09-07 14:00 | 2018-10-05 14:00 |  | 29d |  |  |  |  | 196h | 9,410 |
| 47 | 6.1 | Launch planning |  | 8d | 2018-09-07 14:00 | 2018-09-19 14:00 | 39 | 29d | 0d |  |  | Carole Poland [50%]; Jane Dow | 60h | 3,580 |
| 48 | 6.2 | Assign launch team members |  | 1d | 2018-09-19 14:00 | 2018-09-20 14:00 | 47 | 29d | 0d |  |  | Carole Poland | 8h | 420 |
| 49 | 6.3 | Complete author questionnaire |  | 5d | 2018-09-20 14:00 | 2018-09-27 14:00 | 48 | 29d | 0d |  |  | Hany Morcos; Tad Orman; Travel [0.1%] | 80h | 3,550 |
| 50 | 6.4 | Schedule author interviews |  | 1d | 2018-09-27 14:00 | 2018-09-28 14:00 | 49 | 29d | 0d |  |  | Hany Morcos | 8h | 310 |
| 51 | 6.5 | Design and order marketing material |  | 5d | 2018-09-28 14:00 | 2018-10-05 14:00 | 50 | 29d |  |  |  | Hany Morcos | 40h | 1,550 |
