# Children's Gourmet Cookbook

Schedule from MS Project, 2018-07-16 to 2018-11-05, status date 2018-09-14, costs in $, A marks actual dates.
Lucerne Publishing

## Calendars

- Standard: Mon-Fri 08:00-12:00, 13:00-17:00; Sat-Sun off.

## Resources

| Resource | Rate |
| --- | --- |
| John Evans | 62 |
| Katie Jordan | 48 |
| Robin Wood | 44 |
| William Flash | 55 |
| Carole Poland | 52.5 |
| Printing Service |  |
| Color Setting Services |  |
| Copyeditors |  |

## Schedule

| ID | WBS | Task | Type | Duration | Start | Finish | Predecessors | Complete | Remaining | Baseline start | Baseline finish | Baseline duration | Total slack | Free slack | Resources | Work | Actual work | Cost | Baseline cost | Actual cost |
| --- | --- | --- | --- | --- | --- | --- | --- | --- | --- | --- | --- | --- | --- | --- | --- | --- | --- | --- | --- | --- |
| 1 | 1 | **Acquisition** |  | 31d | 2018-07-16 A | 2018-08-27 A |  | 100% |  | 2018-07-16 | 2018-08-21 | 27d |  |  |  | 232h | 232h | 12,180 | 10,500 | 12,180 |
| 2 | 1.1 | Manuscript received | milestone | 0d | 2018-07-16 A | 2018-07-16 A |  | 100% |  | 2018-07-16 | 2018-07-16 | 0d |  |  | Carole Poland |  |  |  |  |  |
| 3 | 1.2 | Content edit |  | 29d | 2018-07-16 A | 2018-08-27 A | 2 | 100% |  | 2018-07-16 | 2018-08-21 | 25d |  |  | Carole Poland | 232h | 232h | 12,180 | 10,500 | 12,180 |
| 4 | 1.3 | Handoff to Editorial | milestone | 0d | 2018-08-27 A | 2018-08-27 A | 3 | 100% |  | 2018-08-21 | 2018-08-21 | 0d |  |  | Carole Poland |  |  |  |  |  |
| 5 | 2 | **Editorial** |  | 30d | 2018-08-28 A | 2018-10-08 | 1 | 47% | 16d | 2018-08-22 | 2018-10-02 | 30d | 0d |  |  | 240h | 112h | 3,520 | 3,520 | 1,760 |
| 6 | 2.1 | Organize manuscript for copyedit |  | 5d | 2018-08-28 A | 2018-09-03 A |  | 100% |  | 2018-08-22 | 2018-08-28 | 5d |  |  | Robin Wood | 40h | 40h | 1,760 | 1,760 | 1,760 |
| 7 | 2.2 | Copyedit |  | 20d | 2018-09-04 A | 2018-10-01 | 6 | 45% | 11d | 2018-08-29 | 2018-09-25 | 20d | 0d |  | Copyeditors | 160h | 72h |  |  |  |
| 8 | 2.3 | Copyedit incorp |  | 5d | 2018-10-02 | 2018-10-08 | 7 |  |  | 2018-09-26 | 2018-10-02 | 5d | 0d |  | Robin Wood | 40h |  | 1,760 | 1,760 |  |
| 9 | 2.4 | Handoff to Production | milestone | 0d | 2018-10-08 | 2018-10-08 | 8 |  |  | 2018-10-02 | 2018-10-02 | 0d | 0d |  | Robin Wood |  |  |  |  |  |
| 10 | 3 | **Design and Production** |  | 20d | 2018-08-28 A | 2018-09-24 | 5SS | 77% | 4.67d | 2018-08-22 | 2018-09-18 | 20d | 10d |  |  | 320h | 256h | 16,160 | 16,160 | 12,784 |
| 11 | 3.1 | Cover design |  | 5d | 2018-08-28 A | 2018-09-03 A |  | 100% |  | 2018-08-22 | 2018-08-28 | 5d |  |  | William Flash | 40h | 40h | 2,200 | 2,200 | 2,200 |
| 12 | 3.2 | Set pages |  | 10d | 2018-09-04 A | 2018-09-17 | 11 | 90% | 1d | 2018-08-29 | 2018-09-11 | 10d | 15d | 0d | Robin Wood; Katie Jordan | 160h | 144h | 7,360 | 7,360 | 6,624 |
| 13 | 3.3 | Interior illustration design |  | 15d | 2018-09-04 A | 2018-09-24 | 12SS | 60% | 6d | 2018-08-29 | 2018-09-18 | 15d | 10d |  | William Flash | 120h | 72h | 6,600 | 6,600 | 3,960 |
| 14 | 4 | **Pages review** |  | 20d | 2018-10-09 | 2018-11-05 | 10, 5 |  |  | 2018-10-03 | 2018-10-30 | 20d | 0d |  |  | 280h |  | 14,580 | 14,580 |  |
| 15 | 4.1 | Proofread and index |  | 10d | 2018-10-09 | 2018-10-22 |  |  |  | 2018-10-03 | 2018-10-16 | 10d | 0d |  | John Evans; Katie Jordan | 160h |  | 8,800 | 8,800 |  |
| 16 | 4.2 | Incorporate 1st Pages review |  | 5d | 2018-10-23 | 2018-10-29 | 15 |  |  | 2018-10-17 | 2018-10-23 | 5d | 0d |  | Carole Poland | 40h |  | 2,100 | 2,100 |  |
| 17 | 4.3 | Send proofed pages to Production | milestone | 0d | 2018-10-29 | 2018-10-29 | 16 |  |  | 2018-10-23 | 2018-10-23 | 0d | 0d |  | Robin Wood |  |  |  |  |  |
| 18 | 4.4 | Enter page corrections and index |  | 5d | 2018-10-30 | 2018-11-05 | 17 |  |  | 2018-10-24 | 2018-10-30 | 5d | 0d |  | Katie Jordan; Robin Wood | 80h |  | 3,680 | 3,680 |  |
| 19 | 4.5 | Send to print service | milestone | 0d | 2018-11-05 | 2018-11-05 | 18 |  |  | 2018-10-30 | 2018-10-30 | 0d | 0d |  |  |  |  |  |  |  |
