# Children's Book Schedule

Schedule from MS Project, 2018-04-09 to 2018-12-06, costs in $, A marks actual dates.
Lucerne Publishing

## Calendars

- Standard: Mon-Fri 08:00-12:00, 13:00-17:00; Sat-Sun off.
- Mon-Wed Task Calendar: Mon-Wed 08:00-12:00, 13:00-17:00; Thu-Sun off.

## Resources

| Resource | Group | Unit | Rate |
| --- | --- | --- | --- |
| Carole Poland | Editorial |  | 52.5 |
| Copyeditors | Editorial |  | 45 |
| Dan Jump | Design |  | 75.5 |
| Hany Morcos | Editorial |  | 38.75 |
| Jane Dow | Editorial |  | 55 |
| Jun Cao | Editorial |  | 42 |
| Luis Sousa | Design |  | 70 |
| Printing Service | Production |  |  |
| Travel | Other |  |  |
| Tad Orman | Other |  |  |
| Color Setting Services | Production |  |  |
| Advance proofs | Production | copies | 15 |

## Schedule

| ID | WBS | Task | Type | Duration | Start | Finish | Predecessors | Complete | Remaining | Baseline start | Baseline finish | Baseline duration | Total slack | Constraint | Deadline | Resources | Work | Actual work | Cost | Baseline cost | Actual cost | Text9 |
| --- | --- | --- | --- | --- | --- | --- | --- | --- | --- | --- | --- | --- | --- | --- | --- | --- | --- | --- | --- | --- | --- | --- |
| 1 | 1 | **Editorial staff meeting** |  | 60.12d | 2018-04-16 08:00 A | 2018-07-09 09:00 |  | 54% | 27.75d | 2018-04-16 08:00 | 2018-07-09 09:00 | 60.12d | 108.88d |  |  |  | 45.5h | 24.5h | 2,223 | 2,223 | 1,197 |  |
| 2 | 1.1 | Editorial staff meeting 1 |  | 1h | 2018-04-16 08:00 A | 2018-04-16 09:00 A |  | 100% |  | 2018-04-16 08:00 | 2018-04-16 09:00 | 1h |  | start no earlier than 2018-04-16 08:00 |  | Carole Poland; Jun Cao; Hany Morcos; Dan Jump [50%] | 3.5h | 3.5h | 171 | 171 | 171 |  |
| 3 | 1.2 | Editorial staff meeting 2 |  | 1h | 2018-04-23 08:00 A | 2018-04-23 09:00 A |  | 100% |  | 2018-04-23 08:00 | 2018-04-23 09:00 | 1h |  | start no earlier than 2018-04-23 08:00 |  | Carole Poland; Jun Cao; Hany Morcos; Dan Jump [50%] | 3.5h | 3.5h | 171 | 171 | 171 |  |
| 4 | 1.3 | Editorial staff meeting 3 |  | 1h | 2018-04-30 08:00 A | 2018-04-30 09:00 A |  | 100% |  | 2018-04-30 08:00 | 2018-04-30 09:00 | 1h |  | start no earlier than 2018-04-30 08:00 |  | Carole Poland; Jun Cao; Hany Morcos; Dan Jump [50%] | 3.5h | 3.5h | 171 | 171 | 171 |  |
| 5 | 1.4 | Editorial staff meeting 4 |  | 1h | 2018-05-07 08:00 A | 2018-05-07 09:00 A |  | 100% |  | 2018-05-07 08:00 | 2018-05-07 09:00 | 1h |  | start no earlier than 2018-05-07 08:00 |  | Carole Poland; Jun Cao; Hany Morcos; Dan Jump [50%] | 3.5h | 3.5h | 171 | 171 | 171 |  |
| 6 | 1.5 | Editorial staff meeting 5 |  | 1h | 2018-05-14 08:00 A | 2018-05-14 09:00 A |  | 100% |  | 2018-05-14 08:00 | 2018-05-14 09:00 | 1h |  | start no earlier than 2018-05-14 08:00 |  | Carole Poland; Jun Cao; Hany Morcos; Dan Jump [50%] | 3.5h | 3.5h | 171 | 171 | 171 |  |
| 7 | 1.6 | Editorial staff meeting 6 |  | 1h | 2018-05-21 08:00 A | 2018-05-21 09:00 A |  | 100% |  | 2018-05-21 08:00 | 2018-05-21 09:00 | 1h |  | start no earlier than 2018-05-21 08:00 |  | Carole Poland; Jun Cao; Hany Morcos; Dan Jump [50%] | 3.5h | 3.5h | 171 | 171 | 171 |  |
| 8 | 1.7 | Editorial staff meeting 7 |  | 1h | 2018-05-28 08:00 A | 2018-05-28 09:00 A |  | 100% |  | 2018-05-28 08:00 | 2018-05-28 09:00 | 1h |  | start no earlier than 2018-05-28 08:00 |  | Carole Poland; Jun Cao; Hany Morcos; Dan Jump [50%] | 3.5h | 3.5h | 171 | 171 | 171 |  |
| 9 | 1.8 | Editorial staff meeting 8 |  | 1h | 2018-06-04 08:00 | 2018-06-04 09:00 |  |  |  | 2018-06-04 08:00 | 2018-06-04 09:00 | 1h | 133.88d | start no earlier than 2018-06-04 08:00 |  | Carole Poland; Jun Cao; Hany Morcos; Dan Jump [50%] | 3.5h |  | 171 | 171 |  |  |
| 10 | 1.9 | Editorial staff meeting 9 |  | 1h | 2018-06-11 08:00 | 2018-06-11 09:00 |  |  |  | 2018-06-11 08:00 | 2018-06-11 09:00 | 1h | 128.88d | start no earlier than 2018-06-11 08:00 |  | Carole Poland; Jun Cao; Hany Morcos; Dan Jump [50%] | 3.5h |  | 171 | 171 |  |  |
| 11 | 1.10 | Editorial staff meeting 10 |  | 1h | 2018-06-18 08:00 | 2018-06-18 09:00 |  |  |  | 2018-06-18 08:00 | 2018-06-18 09:00 | 1h | 123.88d | start no earlier than 2018-06-18 08:00 |  | Carole Poland; Jun Cao; Hany Morcos; Dan Jump [50%] | 3.5h |  | 171 | 171 |  |  |
| 12 | 1.11 | Editorial staff meeting 11 |  | 1h | 2018-06-25 08:00 | 2018-06-25 09:00 |  |  |  | 2018-06-25 08:00 | 2018-06-25 09:00 | 1h | 118.88d | start no earlier than 2018-06-25 08:00 |  | Carole Poland; Jun Cao; Hany Morcos; Dan Jump [50%] | 3.5h |  | 171 | 171 |  |  |
| 13 | 1.12 | Editorial staff meeting 12 |  | 1h | 2018-07-02 08:00 | 2018-07-02 09:00 |  |  |  | 2018-07-02 08:00 | 2018-07-02 09:00 | 1h | 113.88d | start no earlier than 2018-07-02 08:00 |  | Carole Poland; Jun Cao; Hany Morcos; Dan Jump [50%] | 3.5h |  | 171 | 171 |  |  |
| 14 | 1.13 | Editorial staff meeting 13 |  | 1h | 2018-07-09 08:00 | 2018-07-09 09:00 |  |  |  | 2018-07-09 08:00 | 2018-07-09 09:00 | 1h | 108.88d | start no earlier than 2018-07-09 08:00 |  | Carole Poland; Jun Cao; Hany Morcos; Dan Jump [50%] | 3.5h |  | 171 | 171 |  |  |
| 15 | 2 | **Acquisition** |  | 37d | 2018-04-09 08:00 A | 2018-05-29 17:00 A |  | 100% |  | 2018-04-09 08:00 | 2018-05-28 12:00 | 35.5d |  |  |  |  | 468h | 468h | 18,127.5 | 17,587.5 | 18,127.5 |  |
| 16 | 2.1 | Manuscript received | milestone | 0d | 2018-04-09 08:00 A | 2018-04-09 08:00 A |  | 100% |  | 2018-04-09 08:00 | 2018-04-09 08:00 | 0d |  |  |  |  |  |  |  |  |  |  |
| 17 | 2.2 | Content edit |  | 15d | 2018-04-09 08:00 A | 2018-05-03 10:00 A | 16 | 100% |  | 2018-04-09 08:00 | 2018-05-03 10:00 | 15d |  |  |  | Carole Poland | 120h | 120h | 6,300 | 6,300 | 6,300 | Full developmental edit |
| 18 | 2.3 | Original art review |  | 10.25d | 2018-04-26 10:00 A | 2018-05-10 12:00 A | 17FS-5d | 100% |  | 2018-04-26 10:00 | 2018-05-10 12:00 | 10.25d |  |  |  | Hany Morcos; Jane Dow | 164h | 164h | 7,687.5 | 7,687.5 | 7,687.5 |  |
| 19 | 2.4 | Author review of content edit |  | 13.5d | 2018-05-10 13:00 A | 2018-05-29 17:00 A | 17, 18 | 100% |  | 2018-05-10 13:00 | 2018-05-28 12:00 | 12d |  |  |  | Tad Orman; Copyeditors | 184h | 184h | 4,140 | 3,600 | 4,140 | Incorp must-fix issues |
| 20 | 2.5 | Handoff to Editorial | milestone | 0d | 2018-05-29 17:00 A | 2018-05-29 17:00 A | 19 | 100% |  | 2018-05-28 12:00 | 2018-05-28 12:00 | 0d |  |  | 2018-06-01 17:00 | Carole Poland |  |  |  |  |  |  |
| 21 | 3 | **Editorial** |  | 28.5d | 2018-05-30 08:00 | 2018-07-09 12:00 | 15 |  |  | 2018-05-28 13:00 | 2018-07-06 14:00 | 29.12d | 0d |  |  |  | 411h |  | 16,183 | 15,670 |  |  |
| 22 | 3.1 | Organize manuscript for copyedit |  | 5d | 2018-05-30 08:00 | 2018-06-05 17:00 |  |  |  | 2018-05-28 13:00 | 2018-06-04 14:00 | 5.12d | 0d |  |  | Hany Morcos; Dan Jump [50%] | 63h |  | 3,213 | 3,060 |  | Address outstanding line edit issues |
| 23 | 3.2 | Copyedit |  | 10.75d | 2018-06-06 08:00 | 2018-06-20 15:00 | 22 |  |  | 2018-06-04 14:00 | 2018-06-19 16:00 | 11.25d | 0d |  |  | Copyeditors [200%] | 188h |  | 8,460 | 8,100 |  | Style Guide compliance |
| 24 | 3.3 | Author review of copyedit |  | 10d | 2018-06-20 15:00 | 2018-07-04 15:00 | 23 |  |  | 2018-06-19 16:00 | 2018-07-03 16:00 | 10d | 0d |  |  | Tad Orman; Copyeditors [25%] | 100h |  | 900 | 900 |  | Incorp must-fix issues |
| 25 | 3.4 | Copyedit incorp |  | 5.12d | 2018-07-02 10:00 | 2018-07-09 12:00 | 24FS-2.5% |  |  | 2018-06-29 11:00 | 2018-07-06 14:00 | 5.12d | 0d |  |  | Carole Poland; Dan Jump [50%] | 60h |  | 3,610 | 3,610 |  | Incorp must-fix issues |
| 26 | 3.5 | Handoff to Production | milestone | 0d | 2018-07-09 12:00 | 2018-07-09 12:00 | 25 |  |  | 2018-07-06 14:00 | 2018-07-06 14:00 | 0d | 0d |  |  | Hany Morcos |  |  |  |  |  |  |

| ID | WBS | Task | Type | Duration | Start | Finish | Predecessors | Baseline start | Baseline finish | Baseline duration | Total slack | Free slack | Constraint | Calendar | Resources | Work | Cost | Baseline cost |
| --- | --- | --- | --- | --- | --- | --- | --- | --- | --- | --- | --- | --- | --- | --- | --- | --- | --- | --- |
| 27 | 4 | **Design and Production** |  | 64.5d | 2018-07-09 13:00 | 2018-10-05 17:00 | 21 | 2018-07-06 14:00 | 2018-09-26 16:00 | 58.25d | 0d |  |  |  |  | 1130h | 57,976.5 | 46,679 |
| 28 | 4.1 | Set pages |  | 15d | 2018-07-09 13:00 | 2018-07-30 12:00 |  | 2018-07-06 14:00 | 2018-07-27 14:00 | 15d | 0d |  |  |  | Jane Dow | 120h | 7,590 | 7,590 |
| 29 | 4.2 | Interior illustration design |  | 17.5d | 2018-07-09 13:00 | 2018-08-01 17:00 | 28SS | 2018-07-06 14:00 | 2018-07-27 16:00 | 15.25d | 0d |  |  |  | Luis Sousa; Hany Morcos | 278h | 15,147.5 | 13,050 |
| 30 | 4.3 | **1st Pages review** |  | 34d | 2018-08-02 08:00 | 2018-09-18 17:00 | 29 | 2018-07-27 16:00 | 2018-09-07 16:00 | 30d | 0d |  |  |  |  | 524h | 23,060 | 13,860 |
| 31 | 4.3.1 | Proofread and index |  | 14d | 2018-08-02 08:00 | 2018-08-21 17:00 |  | 2018-07-27 16:00 | 2018-08-10 16:00 | 10d | 0d |  | start no earlier than 2018-07-20 08:00 |  | Tad Orman; Copyeditors | 224h | 5,040 | 900 |
| 32 | 4.3.2 | Incorporate 1st Pages review |  | 10d | 2018-08-22 08:00 | 2018-09-04 17:00 | 31 | 2018-08-10 16:00 | 2018-08-24 16:00 | 10d | 0d |  |  |  | Hany Morcos; Dan Jump [50%]; Jane Dow | 200h | 11,180 | 6,120 |
| 33 | 4.3.3 | Send proofed pages to Production | milestone | 0d | 2018-09-04 17:00 | 2018-09-04 17:00 | 32 | 2018-08-24 16:00 | 2018-08-24 16:00 | 0d | 0d |  |  |  | Hany Morcos |  |  |  |
| 34 | 4.3.4 | Enter page corrections and index |  | 5d | 2018-09-05 08:00 | 2018-09-11 17:00 | 33 | 2018-08-24 16:00 | 2018-08-31 16:00 | 5d | 0d |  |  |  | Jane Dow; Dan Jump [50%] | 60h | 4,040 | 4,040 |
| 35 | 4.3.5 | Cover design |  | 5d | 2018-09-12 08:00 | 2018-09-18 17:00 | 34 | 2018-08-31 16:00 | 2018-09-07 16:00 | 5d | 0d |  |  |  | Luis Sousa | 40h | 2,800 | 2,800 |
| 36 | 4.4 | **2nd Pages review** |  | 13d | 2018-09-19 08:00 | 2018-10-05 17:00 |  | 2018-09-07 16:00 | 2018-09-26 16:00 | 13d | 0d |  |  |  |  | 120h | 6,345 | 6,345 |
| 37 | 4.4.1 | Proof and review |  | 6.5d | 2018-09-19 08:00 | 2018-09-27 12:00 | 35 | 2018-09-07 16:00 | 2018-09-18 11:00 | 6.5d | 0d |  |  |  | Hany Morcos | 40h | 1,800 | 1,800 |
| 38 | 4.4.2 | Send proofed pages to Production | milestone | 0d | 2018-09-27 12:00 | 2018-09-27 12:00 | 37 | 2018-09-18 11:00 | 2018-09-18 11:00 | 0d | 0d |  |  |  | Hany Morcos |  |  |  |
| 39 | 4.4.3 | Final review |  | 5d | 2018-10-01 08:00 | 2018-10-05 17:00 | 38 | 2018-09-19 16:00 | 2018-09-26 16:00 | 5d | 0d |  |  |  | Jane Dow; Hany Morcos [50%]; Carole Poland [50%]; Advance proofs [20 copies] | 80h | 4,545 | 4,545 |
| 40 | 4.5 | **Design book's companion website** |  | 10d | 2018-09-19 08:00 | 2018-10-02 17:00 | 30 | 2018-09-07 16:00 | 2018-09-21 16:00 | 10d | 3d |  |  |  |  | 88h | 5,834 | 5,834 |
| 41 | 4.5.1 | Create mockup |  | 4.5d | 2018-09-19 08:00 | 2018-09-28 17:00 |  | 2018-09-07 16:00 | 2018-09-19 16:00 | 4.5d | 3d | 0d |  |  | Luis Sousa; Hany Morcos | 48h | 2,610 | 2,610 |
| 42 | 4.5.2 | Review with author |  | 2d | 2018-10-01 08:00 | 2018-10-02 17:00 | 41 | 2018-09-19 16:00 | 2018-09-21 16:00 | 2d | 3d |  |  |  | Luis Sousa; Tad Orman; Travel [0.1%]; Dan Jump [50%] | 40h | 3,224 | 3,224 |
| 43 | 5 | **Color prep and printing** |  | 44d | 2018-10-08 08:00 | 2018-12-06 17:00 | 40 | 2018-09-26 16:00 | 2018-11-29 16:00 | 46d | 0d |  |  |  |  | 328h | 5,310 | 5,310 |
| 44 | 5.1 | Send to color house |  | 1d | 2018-10-08 08:00 | 2018-10-08 17:00 | 36 | 2018-09-26 16:00 | 2018-10-01 16:00 | 1d | 0d |  |  | Mon-Wed Task Calendar | Hany Morcos | 8h | 310 | 310 |
| 45 | 5.2 | Generate proofs |  | 10d | 2018-10-09 08:00 | 2018-10-22 17:00 | 44 | 2018-10-01 16:00 | 2018-10-15 16:00 | 10d | 0d |  |  |  | Color Setting Services | 80h | 5,000 | 5,000 |
| 46 | 5.3 | Print and ship |  | 30d | 2018-10-26 08:00 | 2018-12-06 17:00 | 45FS+3d | 2018-10-18 16:00 | 2018-11-29 16:00 | 30d | 0d |  |  |  | Printing Service | 240h |  |  |
| 47 | 6 | **Book launch prep** |  | 22d | 2018-10-09 08:00 | 2018-11-07 17:00 |  | 2018-10-01 16:00 | 2018-10-31 16:00 | 22d | 21d |  |  |  |  | 212h | 9,442 | 9,442 |
| 48 | 6.1 | Launch planning |  | 5d | 2018-10-09 08:00 | 2018-10-15 17:00 | 44 | 2018-10-01 16:00 | 2018-10-08 16:00 | 5d | 21d | 0d |  |  | Carole Poland [50%]; Jane Dow | 36h | 2,062 | 2,062 |
| 49 | 6.2 | Assign launch team members |  | 1d | 2018-10-16 08:00 | 2018-10-16 17:00 | 48 | 2018-10-08 16:00 | 2018-10-09 16:00 | 1d | 21d | 0d |  |  | Carole Poland | 8h | 420 | 420 |
| 50 | 6.3 | Complete author questionnaire |  | 5d | 2018-10-17 08:00 | 2018-10-23 17:00 | 49 | 2018-10-09 16:00 | 2018-10-16 16:00 | 5d | 21d | 0d |  |  | Hany Morcos; Tad Orman; Travel [0.1%] | 80h | 3,550 | 3,550 |
| 51 | 6.4 | Schedule author interviews |  | 1d | 2018-10-24 08:00 | 2018-10-24 17:00 | 50 | 2018-10-16 16:00 | 2018-10-17 16:00 | 1d | 21d | 0d |  |  | Hany Morcos | 8h | 310 | 310 |
| 52 | 6.5 | Design and order marketing material |  | 10d | 2018-10-25 08:00 | 2018-11-07 17:00 | 51 | 2018-10-17 16:00 | 2018-10-31 16:00 | 10d | 21d |  |  |  | Hany Morcos | 80h | 3,100 | 3,100 |
