# Children's Exercise Book Launch schedule

Schedule from MS Project, 2018-07-23 to 2018-09-12, costs in $.
Lucerne Publishing

## Calendars

- Standard: Mon-Fri 08:00-12:00, 13:00-17:00; Sat-Sun off.

## Resources

| Resource | Rate | Notes |
| --- | --- | --- |
| Jun Cao | 42 |  |
| Sharon Salavaria | 27.5 | Sharon's standard pay rate is adjusted for her half-time work schedule. |
| Toby Nixon | 67.5 | Toby worked on launch campaigns for Toni Poe's previous two books. |
| Toni Poe |  |  |
| Zac Woodall | 55 |  |
| Copyeditors | 45 |  |
| Travel |  |  |
| Carole Poland | 52.5 |  |
| Dan Jump | 75.5 |  |
| Hany Morcos | 38.75 |  |
| Jane Dow | 55 |  |
| John Evans | 69.5 |  |
| Katie Jordan | 48 |  |
| Luis Sousa | 70 |  |
| Printing Service |  |  |
| Robin Wood | 44 |  |
| Vikas Jain | 22 |  |
| William Flash |  |  |

## Schedule

| ID | WBS | Task | Type | Duration | Start | Finish | Predecessors | Total slack | Resources | Work | Cost |
| --- | --- | --- | --- | --- | --- | --- | --- | --- | --- | --- | --- |
| 1 | 1 | **Planning Phase** |  | 11d | 2018-07-23 | 2018-08-06 |  | 0d |  | 248h | 11,900 |
| 2 | 1.1 | Assign launch team members |  | 1d | 2018-07-23 | 2018-07-23 |  | 0d | Carole Poland | 8h | 420 |
| 3 | 1.2 | Complete author questionnaire |  | 1w | 2018-07-24 | 2018-07-30 | 2 | 5d | Toni Poe | 40h |  |
| 4 | 1.3 | Schedule author interviews |  | 1w | 2018-07-23 | 2018-07-30 | 2 | 5d | Jun Cao | 40h | 1,680 |
| 5 | 1.4 | Design and order marketing material |  | 2w | 2018-07-24 | 2018-08-06 | 2 | 0d | Toby Nixon; Zac Woodall | 160h | 9,800 |
| 6 | 1.5 | Planning complete! | milestone | 0d | 2018-08-06 | 2018-08-06 | 5 | 0d |  |  |  |
| 7 | 2 | **Internal Launch Phase** |  | 13d | 2018-08-07 | 2018-08-23 | 1 | 0d |  | 268h | 13,102 |
| 8 | 2.1 | Kickoff book launch meeting |  | 1d | 2018-08-07 | 2018-08-07 |  | 0d | Sharon Salavaria [50%]; Toby Nixon | 12h | 650 |
| 9 | 2.2 | Plan author's travel itinerary |  | 6d | 2018-08-08 | 2018-08-15 | 8 | 6d | Jane Dow | 48h | 2,640 |
| 10 | 2.3 | Channel Sales prep |  | 1w | 2018-08-08 | 2018-08-14 | 8 | 0d | Zac Woodall; Hany Morcos | 80h | 3,750 |
| 11 | 2.4 | Complete book launch form |  | 2d | 2018-08-15 | 2018-08-16 | 10 | 5d | Toby Nixon; Vikas Jain | 32h | 1,432 |
| 12 | 2.5 | Prepare book sales kit |  | 1w | 2018-08-15 | 2018-08-21 | 8, 10 | 0d | Hany Morcos; Zac Woodall | 80h | 3,750 |
| 13 | 2.6 | Distribute internal marketing material |  | 2d | 2018-08-22 | 2018-08-23 | 12 | 0d | Zac Woodall | 16h | 880 |
| 14 | 3 | **Public Launch Phase** |  | 14d | 2018-08-24 | 2018-09-12 | 7 | 0d |  | 264h | 12,552 |
| 15 | 3.1 | Distribute advance copies |  | 2d | 2018-08-24 | 2018-08-27 |  | 0d | Toby Nixon; Vikas Jain | 32h | 1,432 |
| 16 | 3.2 | Distribute book sales kit |  | 2d | 2018-08-28 | 2018-08-29 | 15 | 0d | Zac Woodall | 16h | 880 |
| 17 | 3.3 | Coordinate magazine feature articles |  | 7d | 2018-08-30 | 2018-09-07 | 16 | 3d | Zac Woodall | 56h | 3,080 |
| 18 | 3.4 | Launch public Web portal for book |  | 1w | 2018-08-30 | 2018-09-05 | 16 | 0d | Toby Nixon; Vikas Jain | 80h | 3,580 |
| 19 | 3.5 | Launch social media programs for book |  | 1w | 2018-09-06 | 2018-09-12 | 18 | 0d | Toby Nixon; Vikas Jain | 80h | 3,580 |
| 20 | 3.6 | Launch complete! | milestone | 0d | 2018-09-12 | 2018-09-12 | 17, 18, 19 | 0d |  |  |  |

Notes:
- 15: Get recipient list from publicist
